# 沪东船厂智能监控系统

Schedule from a web Gantt chart, 2026-05-25 to 2026-10-19.
Saturdays and Sundays are off

## Schedule

| ID | WBS | Task | Duration | Start | Finish | Predecessors | Status |
| --- | --- | --- | --- | --- | --- | --- | --- |
| 2 | 1 | **需求调研与确认** | 3d | 2026-05-25 | 2026-05-27 |  | waiting |
| 3 | 1.1 | 系统功能需求调研 | 3d | 2026-05-25 | 2026-05-27 |  | waiting |
| 4 | 1.2 | 服务器配置详情调研 | 3d | 2026-05-25 | 2026-05-27 |  | waiting |
| 5 | 1.3 | 内部系统对接详情调研 | 3d | 2026-05-25 | 2026-05-27 |  | waiting |
| 6 | 1.4 | 监控安装施工方案调研 | 3d | 2026-05-25 | 2026-05-27 |  | waiting |
| 7 | 2 | 监控安装施工方案设计 | 3d | 2026-05-28 | 2026-06-01 | 2 | waiting |
| 8 | 3 | U型码头施工安装监控 | 16d | 2026-06-02 | 2026-06-23 | 7 | waiting |
| 9 | 4 | 其他码头施工安装监控 | 25d | 2026-06-24 | 2026-07-28 | 8 | waiting |
| 10 | 5 | 系统设计 | 3d | 2026-05-28 | 2026-06-01 | 2 | waiting |
| 11 | 6 | **系统开发** | 30d | 2026-06-02 | 2026-07-13 |  | waiting |
| 12 | 6.1 | 桌面应用功能开发 | 13d | 2026-06-02 | 2026-06-18 | 10 | waiting |
| 13 | 6.2 | 后端系统功能开发 | 12d | 2026-06-02 | 2026-06-17 | 10 | waiting |
| 14 | 6.3 | AI智能分析功能开发 | 30d | 2026-06-02 | 2026-07-13 | 10 | waiting |
| 15 | 7 | **测试环境系统测试** | 29d | 2026-07-14 | 2026-08-21 |  | waiting |
| 16 | 7.1 | 联调测试 | 5d | 2026-07-14 | 2026-07-20 | 14 | waiting |
| 17 | 7.2 | 集成测试 | 15d | 2026-07-21 | 2026-08-10 | 16 | waiting |
| 18 | 7.3 | 性能测试 | 5d | 2026-08-11 | 2026-08-17 | 17 | waiting |
| 19 | 7.4 | 回归测试 | 4d | 2026-08-18 | 2026-08-21 | 18 | waiting |
| 20 | 8 | **模型优化** | 13d | 2026-08-18 | 2026-09-03 |  | waiting |
| 21 | 8.1 | 码头视频数据采集及筛选 | 3d | 2026-08-18 | 2026-08-20 | 18 | waiting |
| 22 | 8.2 | 码头视频数据标注及模型训练 | 10d | 2026-08-21 | 2026-09-03 | 21 | waiting |
| 23 | 9 | 验证环境部署及系统适配 | 4d | 2026-09-04 | 2026-09-09 | 20 | waiting |
| 24 | 10 | **验证环境系统测试（模拟线上环境）** | 25d | 2026-09-10 | 2026-10-14 |  | waiting |
| 25 | 10.1 | 联调测试 | 3d | 2026-09-10 | 2026-09-14 | 23 | waiting |
| 26 | 10.2 | 集成测试 | 5d | 2026-09-15 | 2026-09-21 | 25 | waiting |
| 27 | 10.3 | 性能测试 | 6d | 2026-09-22 | 2026-09-29 | 26 | waiting |
| 28 | 10.4 | 现场可用性测试 | 5d | 2026-10-08 | 2026-10-14 |  | waiting |
| 29 | 11 | 系统部署 | 3d | 2026-10-15 | 2026-10-19 | 28 | waiting |
